Schedule from MS Project, 2020-10-26 to 2021-01-06.
Microsoft

## Calendars

- 标准: Mon-Fri 08:00-12:00, 13:00-17:00; Sat-Sun off.

## Resources

| Resource |
| --- |
| 前端工程师1 |
| 前端工程师2 |
| 前端工程师3 |
| 前端工程师4 |
| 前端工程师5 |
| 前端工程师6 |
| 前端工程师7 |
| 前端工程师8 |
| JAVA工程师1 |
| JAVA工程师2 |
| JAVA工程师3 |
| 美工1 |
| 测试工程师1 |
| 测试工程师2 |
| 开发经理1 |
| 产品经理1 |
| APP开发工程师1 |
| 前端工程师9 |
| APP开发工程师 |
| 美工 |
| 技术经理 |
| 项目经理 |
| 前端工程师（VUE）1 |
| 前端工程师（VUE）2 |
| 前端工程师（VUE）3 |
| 前端工程师（VUE）4 |
| 前端工程师（VUE）5 |
| 前端工程师（VUE）6 |
| 前端工程师（VUE）7 |
| 前端工程师（VUE）8 |
| 前端工程师（VUE）9 |
| 前端工程师（VUE）10 |
| 前端工程师（VUE）11 |
| 前端工程师（GIS） |
| 前端工程师（GIS）1 |
| JAVA工程师4 |
| JAVA工程师5 |

## Schedule

| ID | WBS | Task | Type | Duration | Start | Finish | Predecessors | Total slack | Resources | Work |
| --- | --- | --- | --- | --- | --- | --- | --- | --- | --- | --- |
| 1 | 1 | **设计阶段-全息智慧社区综合管控平台** |  | 5d | 2020-10-26 | 2020-10-30 |  |  |  | 152h |
| 2 | 1.1 | 系统架构图-系统架构图设计 | manual | 2d | 2020-10-26 | 2020-10-27 |  |  | 技术经理; 项目经理 | 32h |
| 3 | 1.2 | 系统架构图-数据处理流程设计 | manual | 1d | 2020-10-28 | 2020-10-28 |  |  | 技术经理 | 8h |
| 4 | 1.3 | 系统设计-数据库设计和接口设计 | manual | 2d | 2020-10-29 | 2020-10-30 |  |  | JAVA工程师1 | 16h |
| 5 | 1.4 | 系统设计-界面设计 | manual | 4d | 2020-10-27 | 2020-10-30 |  |  | 美工 | 32h |
| 6 | 1.5 | 系统设计-前端种子工程搭建 | manual | 2d | 2020-10-29 | 2020-10-30 |  |  | 前端工程师（VUE）3; 前端工程师（VUE）2 | 32h |
| 7 | 1.6 | 系统设计-服务端种子工程搭建 | manual | 2d | 2020-10-29 | 2020-10-30 |  |  | JAVA工程师2 | 16h |
| 8 | 1.7 | 系统设计-手机端种子工程搭建 | manual | 2d | 2020-10-29 | 2020-10-30 |  |  | APP开发工程师 | 16h |
| 9 | 1.8 | 里程碑-设计完成 | milestone, manual | 0d | 2020-10-30 | 2020-10-30 |  |  |  |  |
| 10 | 2 | **开发阶段-全息智慧社区综合管控平台** |  | 39.88d | 2020-11-02 | 2020-12-25 | 1 | 0d | APP开发工程师; 测试工程师1; 测试工程师2; 美工; 技术经理; 项目经理; JAVA工程师1; JAVA工程师2; JAVA工程师3; 前端工程师（VUE）1; 前端工程师（VUE）2; 前端工程师（VUE）3; 前端工程师（VUE）4; 前端工程师（VUE）5; 前端工程师（VUE）6; 前端工程师（VUE）7; 前端工程师（VUE）8; 前端工程师（VUE）9; 前端工程师（VUE）10; 前端工程师（GIS）1; JAVA工程师4; JAVA工程师5 | 14522h |
| 11 | 2.1 | **移动客户端开发** |  | 20d | 2020-11-02 | 2020-11-27 |  |  | APP开发工程师 | 320h |
| 12 | 2.1.1 | 登记注册 | manual | 3d | 2020-11-02 | 2020-11-04 |  |  | APP开发工程师 | 24h |
| 13 | 2.1.2 | 临时访客登记 | manual | 2d | 2020-11-05 | 2020-11-06 |  |  | APP开发工程师 | 16h |
| 14 | 2.1.3 | 社区公告列表 | manual | 2d | 2020-11-09 | 2020-11-10 |  |  | APP开发工程师 | 16h |
| 15 | 2.1.4 | 报事报修 | manual | 2d | 2020-11-11 | 2020-11-12 |  |  | APP开发工程师 | 16h |
| 16 | 2.1.5 | 投诉意见 | manual | 2d | 2020-11-13 | 2020-11-16 |  |  | APP开发工程师 | 16h |
| 17 | 2.1.6 | 投票管理 | manual | 9d | 2020-11-17 | 2020-11-27 |  |  | APP开发工程师 | 72h |
| 18 | 2.2 | **基础应用开发** |  | 35d | 2020-11-02 | 2020-12-18 |  |  | 前端工程师（VUE）3; 前端工程师（VUE）4; 前端工程师（GIS）1; 前端工程师（VUE）2 | 2240h |
| 19 | 2.2.1 | 设备管理-视频设备 | manual | 3d | 2020-11-02 | 2020-11-04 |  |  | 前端工程师（VUE）3; 前端工程师（VUE）2 | 48h |
| 20 | 2.2.2 | 社区配置 | manual | 3d | 2020-11-02 | 2020-11-04 |  |  | 前端工程师（VUE）4 | 24h |
| 21 | 2.2.3 | 人房车管理 | manual | 12d | 2020-11-05 | 2020-11-20 |  |  | 前端工程师（VUE）2; 前端工程师（VUE）3; 前端工程师（VUE）4 | 288h |
| 22 | 2.2.4 | 通知公告管理 | manual | 10d | 2020-11-23 | 2020-12-04 |  |  | 前端工程师（VUE）4 | 80h |
| 23 | 2.2.5 | 便民服务 | manual | 10d | 2020-12-07 | 2020-12-18 |  |  | 前端工程师（VUE）4 | 80h |
| 24 | 2.2.6 | 社区组织管理 | manual | 20d | 2020-11-23 | 2020-12-18 |  |  | 前端工程师（VUE）2; 前端工程师（VUE）3 | 320h |
| 25 | 2.2.7 | GIS地图 | manual | 35d | 2020-11-02 | 2020-12-18 |  |  | 前端工程师（GIS） | 280h |

| ID | WBS | Task | Type | Duration | Start | Finish | Predecessors | Resources | Work |
| --- | --- | --- | --- | --- | --- | --- | --- | --- | --- |
| 26 | 2.3 | **智慧视频模块** |  | 32d | 2020-11-05 | 2020-12-18 |  | 前端工程师（VUE）5; 前端工程师（VUE）6 | 1016h |
| 27 | 2.3.1 | 实时视频 | manual | 22d | 2020-11-05 | 2020-12-04 | 19 | 前端工程师（VUE）5 | 176h |
| 28 | 2.3.2 | 云台控制 | manual | 10d | 2020-12-07 | 2020-12-18 |  | 前端工程师（VUE）5 | 80h |
| 29 | 2.3.3 | 录像回放 | manual | 22d | 2020-11-05 | 2020-12-04 | 19 | 前端工程师（VUE）6 | 176h |
| 30 | 2.3.4 | 图像信息库 | manual | 9d | 2020-12-07 | 2020-12-17 |  | 前端工程师（VUE）6 | 72h |
| 31 | 2.4 | **智能防控模块** |  | 32d | 2020-11-05 | 2020-12-18 |  | 前端工程师（VUE）7; 前端工程师（VUE）8 | 1024h |
| 32 | 2.4.1 | 通行管理 | milestone, manual | 21d | 2020-11-05 | 2020-12-03 |  | 前端工程师（VUE）7; 前端工程师（VUE）8 | 336h |
| 33 | 2.4.2 | 人脸检索 | manual | 10d | 2020-12-04 | 2020-12-17 |  | 前端工程师（VUE）7 | 80h |
| 34 | 2.4.3 | 车辆检索 | manual | 10d | 2020-12-04 | 2020-12-17 |  | 前端工程师（VUE）8 | 80h |
| 35 | 2.4.4 | 人员轨迹 | manual | 1d | 2020-12-18 | 2020-12-18 |  | 前端工程师（VUE）7 | 8h |
| 36 | 2.4.5 | 车辆轨迹 | manual | 1d | 2020-12-18 | 2020-12-18 |  | 前端工程师（VUE）8 | 8h |
| 37 | 2.5 | **智能应用模块** |  | 32d | 2020-11-05 | 2020-12-18 |  | 前端工程师（VUE）9; 前端工程师（VUE）10 | 1024h |
| 38 | 2.5.1 | 模型设计 | manual | 5d | 2020-11-05 | 2020-11-11 |  | 前端工程师（VUE）9; 前端工程师（VUE）10 | 80h |
| 39 | 2.5.2 | 模型管理 | manual | 10d | 2020-11-12 | 2020-11-25 |  | 前端工程师（VUE）9 | 80h |
| 40 | 2.5.3 | 社区事件 | manual | 10d | 2020-11-12 | 2020-11-25 |  | 前端工程师（VUE）10 | 80h |
| 41 | 2.5.4 | 数据可视化 | manual | 17d | 2020-11-26 | 2020-12-18 |  | 前端工程师（VUE）9; 前端工程师（VUE）10 | 272h |
| 42 | 2.6 | JAVA服务端开发 | manual | 35d | 2020-11-02 | 2020-12-18 |  | JAVA工程师1; JAVA工程师2; JAVA工程师3; JAVA工程师4; JAVA工程师5 | 1400h |
| 43 | 2.7 | 里程碑-客户端整体完成 | milestone, manual | 0d | 2020-12-18 | 2020-12-18 |  |  |  |
| 44 | 2.8 | 当前模块修正 | manual | 5d | 2020-12-21 | 2020-12-25 |  | 美工; 前端工程师（GIS）1; 前端工程师（VUE）2; 前端工程师（VUE）3; 前端工程师（VUE）4; 前端工程师（VUE）5; 前端工程师（VUE）6; 前端工程师（VUE）7; 前端工程师（VUE）8; 前端工程师（VUE）9; 前端工程师（VUE）10; 前端工程师（VUE）11 | 480h |
| 45 | 3 | **测试及回归bug阶段** |  | 8d | 2020-12-28 | 2021-01-06 | 10 | 测试工程师1; 测试工程师2; 技术经理; 美工; 前端工程师（GIS）1; 前端工程师（VUE）2; 前端工程师（VUE）3; 前端工程师（VUE）4; 前端工程师（VUE）5; 前端工程师（VUE）6; 前端工程师（VUE）7; 前端工程师（VUE）8; 前端工程师（VUE）9; 前端工程师（VUE）10; JAVA工程师4; 项目经理; JAVA工程师1; JAVA工程师2; JAVA工程师3; JAVA工程师5 | 2608h |
| 46 | 3.1 | 测试 | manual | 7d | 2020-12-28 | 2021-01-05 |  | 测试工程师1; 测试工程师2 | 112h |
| 47 | 3.2 | 同步回归bug | manual | 8d | 2020-12-28 | 2021-01-06 |  | APP开发工程师; JAVA工程师1; JAVA工程师2; JAVA工程师3; 技术经理; 美工; 前端工程师（GIS）1; 前端工程师（VUE）2; 前端工程师（VUE）3; 前端工程师（VUE）4; 前端工程师（VUE）5; 前端工程师（VUE）6; 前端工程师（VUE）7; 前端工程师（VUE）8; 前端工程师（VUE）9; 前端工程师（VUE）10; JAVA工程师4; 项目经理; JAVA工程师5 | 1216h |
| 48 | 3.3 | 里程碑-系统测试及回归完成 | manual | 1d | 2021-01-06 | 2021-01-06 |  |  |  |
